# OpenEHS - Project Plan

How a schedule from MS Project changed from version to version. A marks actual dates.

## Version 1 (saved 2011-01-12)

Note of the change: Added items to Project Plan

| ID | WBS | Task | Duration | Start | Finish | Total float |
| --- | --- | --- | --- | --- | --- | --- |
| 1 | 1 | **Finish Ghana Hospital Project** | 1d? | 2011-01-12 | 2011-01-12 | 0d |
| 2 | 1.1 | **Create Documentation** | 1d? | 2011-01-12 | 2011-01-12 | 0d |
| 3 |  | Update Project Charter | 1d? | 2011-01-12 | 2011-01-12 |  |
| 4 |  | Create Project Management plan | 1d? | 2011-01-12 | 2011-01-12 |  |
| 5 |  | Revise SSRS | 1d? | 2011-01-12 | 2011-01-12 |  |
| 6 | 1.2 | **Implement Project** | 1d? | 2011-01-12 | 2011-01-12 | 0d |
| 7 | 1.2.1 | **Create Database** | 1d? | 2011-01-12 | 2011-01-12 | 0d |
| 8 |  | Script Database | 1d? | 2011-01-12 | 2011-01-12 |  |
| 9 |  | Create ERD | 1d? | 2011-01-12 | 2011-01-12 |  |
| 10 |  | Create Dummy Data | 1d? | 2011-01-12 | 2011-01-12 |  |
| 11 |  | Write Stored Procedures | 1d? | 2011-01-12 | 2011-01-12 |  |
| 12 | 1.2.2 | **Develop Domain Models** | 1d? | 2011-01-12 | 2011-01-12 | 0d |
| 13 |  | Create Patient Management | 1d? | 2011-01-12 | 2011-01-12 |  |
| 14 |  | Create Inventory Management | 1d? | 2011-01-12 | 2011-01-12 |  |
| 15 |  | Create Encounter Management | 1d? | 2011-01-12 | 2011-01-12 |  |
| 16 |  | Create Billing Management | 1d? | 2011-01-12 | 2011-01-12 |  |
| 17 | 1.2.3 | **Create Presentation Layer** | 1d? | 2011-01-12 | 2011-01-12 | 0d |
| 18 |  | Create Style Sheets | 1d? | 2011-01-12 | 2011-01-12 |  |
| 19 |  | Create Inventory Interface | 1d? | 2011-01-12 | 2011-01-12 |  |
| 20 |  | Create Patient Interface | 1d? | 2011-01-12 | 2011-01-12 |  |
| 21 |  | Create Encounter Interface | 1d? | 2011-01-12 | 2011-01-12 |  |
| 22 |  | Create Payment and Billing Interface | 1d? | 2011-01-12 | 2011-01-12 |  |
| 23 | 1.2.4 | **Run Unit Tests** | 1d? | 2011-01-12 | 2011-01-12 | 0d |
| 24 |  | Create Unit Tests | 1d? | 2011-01-12 | 2011-01-12 |  |
| 25 |  | Run Unit Tests | 1d? | 2011-01-12 | 2011-01-12 |  |
| 26 | 1.3 | **Deploy Project** | 1d? | 2011-01-12 | 2011-01-12 | 0d |
| 27 | 1.3.1 | **Install Project** | 1d? | 2011-01-12 | 2011-01-12 | 0d |
| 28 |  | Install Database | 1d? | 2011-01-12 | 2011-01-12 |  |
| 29 |  | Install Server Software | 1d? | 2011-01-12 | 2011-01-12 |  |
| 30 |  | Install Client Software | 1d? | 2011-01-12 | 2011-01-12 |  |
| 31 |  | On-Site Implementation Testing | 1d? | 2011-01-12 | 2011-01-12 |  |
| 32 |  | Train users | 1d? | 2011-01-12 | 2011-01-12 |  |

## Version 2 (saved 2011-01-19)

Note of the change: Updated MS Project file with resources.

Last finish 2011-01-12 → 2011-03-31 (+78d). Complete tasks 0 → 6.

Added:

| ID | Task | Duration | Start | Finish | Constraint | Resources |
| --- | --- | --- | --- | --- | --- | --- |
| 4 | Merge Both Project Charters | 6d | 2011-01-03 A | 2011-01-10 A | start no earlier than 2011-01-03 |  |
| 5 | Adjust Contents to New Requirements | 6d | 2011-01-03 A | 2011-01-10 A |  |  |
| 7 | Determine Tasks | 1d | 2011-01-03 A | 2011-01-03 A |  | Matt Kimber [75%]; Peter Litster [25%] |
| 8 | Define WBS | 0.25d? | 2011-01-03 A | 2011-01-03 |  | Matt Kimber [50%]; Peter Litster [50%] |
| 9 | Determine Resources | 1d? | 2011-01-03 A | 2011-01-03 |  | Peter Litster |
| 11 | Analyze Use Cases | 1d? | 2011-01-10 A | 2011-01-10 |  | Peter Litster [10%]; Kevin Russon [25%]; Austyn Mahoney [25%]; Brian Sneddon [5%]; J.D. Russel [25%]; Matt Kimber [10%] |
| 12 | Analyze Requirements | 1d? | 2011-01-10 A | 2011-01-10 |  | Austyn Mahoney [25%]; Brian Sneddon [25%]; J.D. Russel [25%]; Kevin Russon [25%] |
| 13 | Merge Two Existing SSRS Documents | 1d? | 2011-01-07 A | 2011-01-07 |  | Dahln Farnes [50%]; Peter Litster [50%] |
| 14 | **Create User Documentation** | 11d | 2011-01-31 | 2011-02-14 |  |  |
| 15 | Create "How to Add a Patient" | 1d? | 2011-01-31 | 2011-01-31 |  | Peter Litster |
| 16 | Create "How to Remove a Patient" | 1d? | 2011-01-31 | 2011-01-31 |  | Peter Litster |
| 17 | Create "How to Modify a Patient" | 1d? | 2011-01-31 | 2011-01-31 |  | Peter Litster |
| 18 | Create "How to Bill a Patient" | 1d? | 2011-01-31 | 2011-01-31 |  | Peter Litster |
| 19 | Create "How to Diagnose a Patient" | 1d? | 2011-01-31 | 2011-01-31 |  | Peter Litster |
| 20 | Create "How to Prescribe Medication to a Patient" | 1d? | 2011-01-31 | 2011-01-31 |  | Peter Litster |
| 21 | Create "How to Record a Patient Allergy" | 1d? | 2011-01-31 | 2011-01-31 |  | Peter Litster |
| 33 | **Develop Data Layer** | 11d | 2011-01-17 A | 2011-01-31 |  |  |
| 34 | Create Repository Classes | 2d? | 2011-01-17 | 2011-01-18 |  | Cameron Harp |
| 35 | Learn Entity Framework 4 | 3d? | 2011-01-17 A | 2011-01-19 |  | Cameron Harp; Matt Kimber |
| 42 | **Test** | 46d | 2011-01-17 | 2011-03-19 |  |  |
| 43 | Develop Integration Tests | 35d | 2011-01-17 | 2011-03-04 |  | Kevin Russon |
| 45 | On-Site Integration Tests | 12d | 2011-03-05 | 2011-03-19 |  | Matt Kimber; Cameron Harp |
| 49 | Install MySQL Community Server | 2h? | 2011-03-05 | 2011-03-05 |  | Cameron Harp |
| 50 | Install MySQL Toolbench | 0.5h? | 2011-03-05 | 2011-03-05 |  | Cameron Harp |
| 51 | Install OpenEHS SQL Scripts | 0.5h? | 2011-03-05 | 2011-03-05 |  | Cameron Harp |
| 52 | **Install Dependencies** | 8h? | 2011-03-05 | 2011-03-05 |  |  |
| 53 | Install .NET Framework 4 | 0.5h? | 2011-03-05 | 2011-03-05 |  | Matt Kimber |
| 54 | Install IIS | 1h? | 2011-03-05 | 2011-03-05 |  | Matt Kimber |
| 55 | Install ASP.NET MVC 3 | 0.5h? | 2011-03-05 | 2011-03-05 |  | Matt Kimber |

Removed: 24 Create Unit Tests; 25 Run Unit Tests; 29 Install Server Software; 32 Train users

Changed:

| ID | Task | Start | Finish | Duration | Complete | Total float | Other |
| --- | --- | --- | --- | --- | --- | --- | --- |
| 1 | **OpenEHS** | 2011-01-12 → 2011-01-03 A (-9d) | 2011-01-12 → 2011-03-31 (+78d) | 1d? → 64d | 0% → 28% | 0d → none | was named Finish Ghana Hospital Project |
| 2 | **Documentation** | 2011-01-12 → 2011-01-03 A (-9d) | 2011-01-12 → 2011-02-14 (+33d) | 1d? → 31d | 0% → 64% | 0d → none | was named Create Documentation |
| 3 | **Update Project Charter** | 2011-01-12 → 2011-01-03 A (-9d) | 2011-01-12 → 2011-01-10 A (-2d) | 1d? → 6d | 0% → 100% |  |  |
| 6 | **Create Project Management Plan** | 2011-01-12 → 2011-01-15 (+3d) | 2011-01-12 → 2011-01-17 (+5d) | 1d? → 16h? | 0% → 75% |  | was named Create Project Management plan |
| 10 | **Revise SSRS** | 2011-01-12 → 2011-01-03 (-9d) | 2011-01-12 → 2011-01-17 (+5d) | 1d? → 11d | 0% → 58% |  |  |
| 22 | **Implementation** | 2011-01-12 → 2011-01-03 (-9d) | 2011-01-12 → 2011-03-19 (+66d) | 1d? → 56d? | 0% → 24% | 0d → none | was named Implement Project |
| 23 | **Create Database** | 2011-01-12 → 2011-01-05 A (-7d) | 2011-01-12 → 2011-01-17 (+5d) | 1d? → 9d | 0% → 93% | 0d → none |  |
| 24 | Script Database | 2011-01-12 → 2011-01-05 A (-7d) | 2011-01-12 → 2011-01-15 A (+3d) | 1d? → 9d | 0% → 100% |  | resources none → Cameron Harp |
| 25 | Create ERD | 2011-01-12 → 2011-01-05 A (-7d) | 2011-01-12 → 2011-01-15 A (+3d) | 1d? → 9d | 0% → 100% |  | resources none → Cameron Harp |
| 26 | Create Test Data | 2011-01-12 → 2011-01-15 (+3d) | 2011-01-12 → 2011-01-17 (+5d) | 1d? → 2d |  |  | was named Create Dummy Data; resources none → Kevin Russon |
| 27 | Create Stored Procedures | 2011-01-12 → 2011-01-05 A (-7d) | 2011-01-12 → 2011-01-15 A (+3d) | 1d? → 9d | 0% → 100% |  | was named Write Stored Procedures; resources none → Cameron Harp |
| 28 | **Develop Domain Models** | 2011-01-12 → 2011-01-05 A (-7d) | 2011-01-12 → 2011-01-31 (+19d) | 1d? → 19d | 0% → 50% | 0d → none |  |
| 29 | Develop Patient | 2011-01-12 → 2011-01-05 A (-7d) | 2011-01-12 → 2011-01-05 (-7d) |  | 0% → 50% |  | was named Create Patient Management; resources none → Matt Kimber |
| 30 | Develop Inventory | 2011-01-12 → 2011-01-05 A (-7d) | 2011-01-12 → 2011-01-05 (-7d) |  | 0% → 50% |  | was named Create Inventory Management; resources none → Matt Kimber |
| 31 | Develop Encounter | 2011-01-12 → 2011-01-05 A (-7d) | 2011-01-12 → 2011-01-05 (-7d) |  | 0% → 50% |  | was named Create Encounter Management; resources none → Matt Kimber |
| 32 | Develop Billing | 2011-01-12 → 2011-01-05 A (-7d) | 2011-01-12 → 2011-01-05 (-7d) |  | 0% → 50% |  | was named Create Billing Management; resources none → Matt Kimber |
| 36 | **Create Presentation Layer** | 2011-01-12 → 2011-01-17 (+5d) | 2011-01-12 → 2011-02-14 (+33d) | 1d? → 21d |  | 0d → none |  |
| 37 | Design Layout | 2011-01-12 → 2011-01-17 (+5d) | 2011-01-12 → 2011-01-18 (+6d) | 1d? → 2d? |  |  | was named Create Style Sheets; resources none → Austyn Mahoney |
| 38 | Create Inventory UI | 2011-01-12 → 2011-01-17 (+5d) | 2011-01-12 → 2011-01-17 (+5d) |  |  |  | was named Create Inventory Interface; resources none → Dahln Farnes |
| 39 | Create Patient UI | 2011-01-12 → 2011-01-17 (+5d) | 2011-01-12 → 2011-01-17 (+5d) |  |  |  | was named Create Patient Interface; resources none → J.D. Russel |
| 40 | Create Encounter UI | 2011-01-12 → 2011-01-17 (+5d) | 2011-01-12 → 2011-01-17 (+5d) |  |  |  | was named Create Encounter Interface; resources none → Brian Sneddon |
| 41 | Create Billing UI | 2011-01-12 → 2011-01-17 (+5d) | 2011-01-12 → 2011-01-17 (+5d) |  |  |  | was named Create Payment and Billing Interface; resources none → Matt Kimber |
| 44 | Develop Unit Tests | 2011-01-12 → 2011-01-17 (+5d) | 2011-01-12 → 2011-03-04 (+51d) | 1d? → 35d |  | 0d → none | was named Run Unit Tests; resources none → Kevin Russon |
| 46 | **Deployment** | 2011-01-12 → 2011-03-05 (+52d) | 2011-01-12 → 2011-03-19 (+66d) | 1d? → 12d |  | 0d → none | was named Deploy Project |
| 47 | **Install Project** | 2011-01-12 → 2011-03-05 (+52d) | 2011-01-12 → 2011-03-05 (+52d) | 1d? → 0d? |  |  |  |
| 48 | **Install MySQL** | 2011-01-12 → 2011-03-05 (+52d) | 2011-01-12 → 2011-03-05 (+52d) | 1d? → 8h? |  |  | was named Install Database |
| 56 | Install OpenEHS | 2011-01-12 → 2011-03-05 (+52d) | 2011-01-12 → 2011-03-05 (+52d) |  |  |  | was named Install Client Software; resources none → J.D. Russel |
| 57 | On-Site Training | 2011-01-12 → 2011-03-05 (+52d) | 2011-01-12 → 2011-03-19 (+66d) | 1d? → 12d |  |  | was named On-Site Implementation Testing; resources none → Cameron Harp; Matt Kimber; J.D. Russel |

## Version 3 (saved 2011-01-23)

Note of the change: Updated the database status in the project file.

Last finish stays 2011-03-31. Complete tasks 6 → 7.

Added:

| ID | Task | Duration | Start | Finish |
| --- | --- | --- | --- | --- |
| 36 | Look into Unit of Work Pattern | 2d? | 2011-01-17 | 2011-01-18 |
| 43 | Develop Custom ASP.NET Membership Provider | 1d? | 2011-01-17 | 2011-01-17 |

Changed:

| ID | Task | Start | Finish | Complete | Other |
| --- | --- | --- | --- | --- | --- |
| 22 | **Implementation** |  |  | 24% → 25% |  |
| 23 | **Create Database** |  | 2011-01-17 A | 93% → 100% |  |
| 26 | Create Test Data | 2011-01-15 A | 2011-01-17 A | 0% → 100% |  |
| 32 | Develop Billing |  |  |  | resources Matt Kimber → Matt Kimber; Dahln Farnes; Cameron Harp |
| 33 | **Develop Data Layer** |  |  | 15% → 11% |  |

## Version 4 (saved 2011-01-23)

Note of the change: Updated the status of a couple of things. Also renamed a couple tasks.

Last finish stays 2011-03-31. Complete tasks 7 → 11.

Removed: 36 Look into Unit of Work Pattern

Changed:

| ID | Task | Finish | Duration | Complete | Other |
| --- | --- | --- | --- | --- | --- |
| 1 | **OpenEHS** |  |  | 28% → 30% |  |
| 2 | **Documentation** |  |  | 64% → 69% |  |
| 6 | **Create Project Management Plan** |  |  | 75% → 78% |  |
| 8 | Define WBS | 2011-01-03 A | 0.25d? → 0.25d | 75% → 100% |  |
| 10 | **Revise SSRS** |  |  | 58% → 100% |  |
| 11 | Analyze Use Cases | 2011-01-10 A | 1d? → 1d | 50% → 100% |  |
| 12 | Analyze Requirements | 2011-01-10 A | 1d? → 1d | 50% → 100% |  |
| 13 | Merge Two Existing SSRS Documents | 2011-01-07 A | 1d? → 1d | 75% → 100% |  |
| 33 | **Develop Data Layer** |  |  | 11% → 25% |  |
| 35 | Setup Entity Framework 4 | 2011-01-19 → 2011-01-17 (-2d) | 3d? → 1d? | 25% → 75% | was named Learn Entity Framework 4 |
